# CPROY_V1.0_2016

Schedule from MS Project, 2016-05-02 to 2016-07-21, A marks actual dates.

## Calendars

- Estándar: Mon-Fri 09:00-13:00, 15:00-19:00; Sat-Sun off.

## Schedule

| ID | WBS | Task | Type | Duration | Start | Finish | Predecessors | Complete | Remaining | Actual start | Total slack | Free slack | Constraint |
| --- | --- | --- | --- | --- | --- | --- | --- | --- | --- | --- | --- | --- | --- |
| 1 | 1 | **PROYECTO BIO-ASSISTENS** |  | 58d | 2016-05-02 A | 2016-07-20 |  | 28% | 41.94d |  |  |  |  |
| 2 | 1.1 | **Proceso de Gestion** |  | 58d | 2016-05-02 | 2016-07-20 |  |  |  |  |  |  |  |
| 3 | 1.1.1 | **Inicio** |  | 58d | 2016-05-02 | 2016-07-20 |  |  |  |  |  |  |  |
| 4 | 1.1.1.1 | Revisión de la Metodología de Trabajo |  | 59d | 2016-05-02 | 2016-07-21 |  |  |  |  | -1d | 0d |  |
| 5 | 1.2 | **Planificación** |  | 17d | 2016-05-02 A | 2016-05-24 |  | 91% | 1.59d |  | 0d |  |  |
| 6 | 1.2.1 | **Plan de Proyecto** |  | 10d | 2016-05-05 | 2016-05-18 |  | 91% | 0.94d | 2016-05-02 |  |  |  |
| 7 | 1.2.1.1 | **Elaboración de Plan de Proyecto** |  | 17d | 2016-05-02 A | 2016-05-24 |  | 89% | 1.92d |  |  |  |  |
| 8 | 1.2.1.1.1 | Definir Nombre del Proyecto |  | 3d | 2016-05-02 A | 2016-05-04 A |  | 100% |  |  |  |  |  |
| 9 | 1.2.1.1.2 | Definir Objetivos de Proyecto |  | 1d | 2016-05-04 A | 2016-05-05 A | 8 | 100% |  |  |  |  |  |
| 10 | 1.2.1.1.3 | Elaboración de Cronograma Detallado | manual | 13d | 2016-05-06 A | 2016-05-24 A |  | 100% |  |  |  |  |  |
| 11 | 1.2.1.1.4 | Gestión de Comunicaciones |  | 1d | 2016-05-06 A | 2016-05-06 A |  | 100% |  |  |  |  | start no earlier than 2016-05-06 |
| 12 | 1.2.1.1.5 | Necesidades del Proyecto | manual | 2d | 2016-05-06 A | 2016-05-07 A |  | 100% |  |  |  |  |  |
| 13 | 1.2.1.1.6 | Identificación de Riesgos del Proyecto | manual | 6d | 2016-05-07 A | 2016-05-13 A |  | 100% |  |  |  |  |  |
| 14 | 1.2.1.1.7 | Elaborar Documento de Riesgos del Proyecto |  | 1d | 2016-05-14 A | 2016-05-16 A | 9 | 100% |  |  |  |  |  |
| 15 | 1.2.1.1.8 | Elaborar Documento Plan de Proyecto | manual | 10.7d | 2016-05-05 A | 2016-05-19 |  | 60% | 4.28d |  |  |  | start no earlier than 2016-05-05 |
| 16 | 1.2.1.1.9 | Traspaso de Información | manual | 1d | 2016-05-24 A | 2016-05-24 |  | 90% | 0.1d |  |  |  | start no earlier than 2016-05-24 |
| 17 | 1.2.1.2 | **Revisión Interna Plan de Proyecto** |  | 1d | 2016-05-14 A | 2016-05-14 A |  | 100% |  |  |  |  |  |
| 18 | 1.2.1.2.1 | Revisión de Plan de Proyecto por el equipo del Proyecto | manual | 1d | 2016-05-14 A | 2016-05-14 A |  | 100% |  |  |  |  |  |
| 19 | 1.2.1.2.2 | Ajustes al Plan de Proyecto | manual | 1d | 2016-05-14 A | 2016-05-14 A |  | 100% |  |  |  |  |  |
| 20 | 1.2.1.2.3 | Elaborar Acta de REVISION INTERNA del PLAN DE PROYECTO | manual | 1d | 2016-05-14 A | 2016-05-14 A |  | 100% |  |  |  |  |  |
| 21 | 1.2.1.2.4 | Traspaso de Información | manual | 1d | 2016-05-14 A | 2016-05-14 A |  | 100% |  |  |  |  |  |
| 22 | 1.2.1.3 | **Gestión de la Configuración** |  | 2d | 2016-05-05 A | 2016-05-06 A |  | 100% |  |  |  |  |  |
| 23 | 1.2.1.3.1 | Establecer Repositorio de Datos | manual | 2d | 2016-05-05 A | 2016-05-06 A |  | 100% |  |  |  |  |  |
| 24 | 1.2.1.3.2 | Asignar Gestor de Configuración | manual | 1d | 2016-05-06 A | 2016-05-06 A |  | 100% |  |  |  |  |  |
| 25 | 1.2.1.3.3 | Elaborar Solicitud de Accesos | manual | 1d | 2016-05-06 A | 2016-05-06 A |  | 100% |  |  |  |  |  |

Notes:
- 8: BIO-ASISTENS
- 9: Inciso 4 plan de proyecto
- 11: 9.2.4 de Plan de Proyecto
- 12: 6 de Plan de Proyecto
- 13: 9.1 Plan de Proyecto
- 14: REGRI_V0.1_2016.xlsx
- 15: PPROY_V0.1_2016

| ID | WBS | Task | Type | Duration | Start | Finish | Complete | Remaining | Total slack |
| --- | --- | --- | --- | --- | --- | --- | --- | --- | --- |
| 26 | 1.3 | **Asiganción, Ejecución, Seguimiento y Control** |  | 32.88d | 2016-05-05 A | 2016-06-20 | 30% | 23.1d | 0d |
| 27 | 1.3.1 | **Desarrollo del Área de Proceso PP - PMC** |  | 10d | 2016-05-05 A | 2016-05-18 A | 100% |  |  |
| 28 | 1.3.1.1 | Elaborar Plantilla de Reunión Externa Mensual | manual | 1d | 2016-05-05 A | 2016-05-05 A | 100% |  |  |
| 29 | 1.3.1.2 | Elaborar Plantilla de Gestion de Riesgos | manual | 1d | 2016-05-06 A | 2016-05-06 A | 100% |  |  |
| 30 | 1.3.1.3 | Elaborar Plantilla de Informe de Avances Quincenales | manual | 1d | 2016-05-07 A | 2016-05-07 A | 100% |  |  |
| 31 | 1.3.1.4 | Elaborar Plantillas de Actas de Reunión Interna Quincenal | manual | 1d | 2016-05-09 A | 2016-05-09 A | 100% |  |  |
| 32 | 1.3.1.5 | Elaborar Formato de Aceptación de Entregables | manual | 1d | 2016-05-10 A | 2016-05-10 A | 100% |  |  |
| 33 | 1.3.1.6 | Elaborar Documento Gestión de Procesos PP-PMC | manual | 5d | 2016-05-11 A | 2016-05-17 A | 100% |  |  |
| 34 | 1.3.1.7 | Traspaso de Información | manual | 1d | 2016-05-18 A | 2016-05-18 A | 100% |  |  |
| 35 | 1.3.2 | **Desarrollo del Área de Proceso REQM** |  | 3d | 2016-06-01 | 2016-06-03 |  |  | 0d |
| 36 | 1.3.2.1 | Elaborar Formato de Solicitud a Cambios a Requerimientos | manual | 1d | 2016-06-01 | 2016-06-01 |  |  |  |
| 37 | 1.3.2.2 | Elaborar Formato de Matriz de Trazabilidad de Requerimientos | manual | 1d | 2016-06-01 | 2016-06-01 |  |  |  |
| 38 | 1.3.2.3 | Elaborar Formato de Registro de Cambios a Requerimientos | manual | 1d | 2016-06-01 | 2016-06-01 |  |  |  |
| 39 | 1.3.2.4 | Elaborar Documento de Proceso de Gestión de cambios de Requerimientos | manual | 2d | 2016-06-02 | 2016-06-03 |  |  |  |
| 40 | 1.3.2.5 | Traspaso de Información | manual | 1d | 2016-06-02 | 2016-06-02 |  |  |  |
| 41 | 1.3.3 | **Desarrollo de Área de Proceso PPQA** |  | 3.88d | 2016-06-09 | 2016-06-14 |  |  | 0d |
| 42 | 1.3.3.1 | Elaborar Formato de CheckList de Aseguramiento de la Calidad | manual | 1d | 2016-06-09 | 2016-06-09 |  |  |  |
| 43 | 1.3.3.2 | Elaborar Herramienta de Gestión de Aseguramiento de la Calidad | manual | 1d | 2016-06-09 | 2016-06-09 |  |  |  |
| 44 | 1.3.3.3 | Elaborar Plantilla de Informe General de QA | manual | 1d | 2016-06-09 | 2016-06-09 |  |  |  |
| 45 | 1.3.3.4 | Elaborar Formato de Solicitud de Control de Calidad del Producto | manual | 1d | 2016-06-09 | 2016-06-09 |  |  |  |
| 46 | 1.3.3.5 | Elaborar documento de Proceso de Aseguramiento de la calidad | manual | 3d | 2016-06-10 | 2016-06-14 |  |  |  |
| 47 | 1.3.3.6 | Traspaso de Información | manual | 1d | 2016-06-14 | 2016-06-14 |  |  |  |
| 48 | 1.3.4 | **Desarrollo de Área de Proceso MA** |  | 2.88d | 2016-06-16 | 2016-06-20 |  |  | 0d |
| 49 | 1.3.4.1 | Elaborar Formato de Ficha de Métricas de Numero de N Conformidades de Producto | manual | 1d | 2016-06-16 | 2016-06-16 |  |  |  |
| 50 | 1.3.4.2 | Elaborar Formato de Ficha de Métricas de Índice de Cambios de Ítems de Configuración | manual | 1d | 2016-06-16 | 2016-06-16 |  |  |  |
| 51 | 1.3.4.3 | Elaborar Formato de Ficha de Métricas de Volatilidad de Requerimientos | manual | 1d | 2016-06-16 | 2016-06-16 |  |  |  |
| 52 | 1.3.4.4 | Elaborar Formato de Ficha de Métricas de Exposición al Riesgo | manual | 1d | 2016-06-16 | 2016-06-16 |  |  |  |
| 53 | 1.3.4.5 | Elaborar Formato de Tablero de Métricas | manual | 1d | 2016-06-16 | 2016-06-16 |  |  |  |
| 54 | 1.3.4.6 | Elaborar Documento de Proceso de Medicion de Métricas | manual | 2d | 2016-06-17 | 2016-06-20 |  |  |  |
| 55 | 1.3.4.7 | Traspaso de Información | manual | 1d | 2016-06-20 | 2016-06-20 |  |  |  |

| ID | WBS | Task | Type | Duration | Start | Finish | Complete | Remaining | Total slack |
| --- | --- | --- | --- | --- | --- | --- | --- | --- | --- |
| 56 | 1.3.5 | **Desarrollo del Área de Proceso CM** |  | 2d | 2016-06-16 | 2016-06-18 |  |  | 0d |
| 57 | 1.3.5.1 | Elaborar Formato de Registro de Ítems de Configuración | manual | 1d | 2016-06-16 | 2016-06-16 |  |  |  |
| 58 | 1.3.5.2 | Elaborar Formato de Solicitud de Accesos | manual | 1d | 2016-06-16 | 2016-06-16 |  |  |  |
| 59 | 1.3.5.3 | Elaborar Documento de Proceso de Gestión de Configuración | manual | 1d | 2016-06-17 | 2016-06-17 |  |  |  |
| 60 | 1.3.5.4 | Traspaso de Información | manual | 1d | 2016-06-18 | 2016-06-18 |  |  |  |
| 61 | 1.4 | **Cierre** |  | 1d | 2016-07-19 | 2016-07-19 |  |  |  |
| 62 | 1.4.1 | **Cierre de Proyecto** |  | 1d | 2016-07-19 | 2016-07-19 |  |  |  |
| 63 | 1.4.1.1 | Revisión de Entregables del Proyecto | manual | 1d | 2016-07-19 | 2016-07-19 |  |  |  |
| 64 | 1.4.1.2 | Elaboración del Acta de Aceptación y Cierre del Proyecto | manual | 1d | 2016-07-19 | 2016-07-19 |  |  |  |
| 65 | 1.4.1.3 | Traspaso de Información | manual | 1d | 2016-07-19 | 2016-07-19 |  |  |  |
| 66 | 1.4.2 | **Relatorio de Proyecto** |  | 1d | 2016-07-19 | 2016-07-19 |  |  |  |
| 67 | 1.4.2.1 | Elaborar Relatorio de Proyecto | manual | 1d | 2016-07-19 | 2016-07-19 |  |  |  |
| 68 | 1.4.2.2 | Revisión y ajustes de Relatorio por el equipo del Proyecto | manual | 1d | 2016-07-19 | 2016-07-19 |  |  |  |
| 69 | 1.4.2.3 | Revisión de Relatorio | manual | 1d | 2016-07-19 | 2016-07-19 |  |  |  |
| 70 | 1.4.2.4 | Traspaso de Información | manual | 1d | 2016-07-19 | 2016-07-19 |  |  |  |
| 71 | 1.5 | **Proceso de Ingeniería** |  | 35.88d | 2016-05-21 A | 2016-07-11 | 1% | 35.5d | 7.12d |
| 72 | 1.5.1 | **Software BIO ASSITENS** |  | 35.88d | 2016-05-21 A | 2016-07-11 | 1% | 35.5d | 7.12d |
| 73 | 1.5.1.1 | **Requerimientos** |  | 9.88d | 2016-05-21 A | 2016-06-03 | 13% | 8.64d | 0d |
| 74 | 1.5.1.1.1 | Desarrollar Plan de Proyecto | manual | 1d | 2016-05-21 A | 2016-05-21 | 50% | 0.5d |  |
| 75 | 1.5.1.1.2 | Elaborar Matriz de Trazabilidad de Requerimientos | manual | 1d | 2016-06-02 | 2016-06-02 |  |  |  |
| 76 | 1.5.1.1.3 | Elaborar Lista Maestra de Requerimientos | manual | 1d | 2016-06-02 | 2016-06-02 |  |  |  |
| 77 | 1.5.1.1.4 | Traspaso de Información | manual | 1d | 2016-06-03 | 2016-06-03 |  |  |  |
| 78 | 1.5.1.2 | **Análisis** |  | 3.88d | 2016-06-04 | 2016-06-09 |  |  | 0d |
| 79 | 1.5.1.2.1 | Revisión de Matriz de Trazabilidad de Requerimientos | manual | 1d | 2016-06-04 | 2016-06-04 |  |  |  |
| 80 | 1.5.1.2.2 | Elaborar Documento de Análisis | manual | 2d | 2016-06-06 | 2016-06-07 |  |  |  |
| 81 | 1.5.1.2.3 | Actualizar Matriz de Trazabilidad de Requerimientos | manual | 1d | 2016-06-08 | 2016-06-08 |  |  |  |
| 82 | 1.5.1.2.4 | Traspaso de Información | manual | 1d | 2016-06-09 | 2016-06-09 |  |  |  |

| ID | WBS | Task | Type | Duration | Start | Finish | Total slack | Constraint |
| --- | --- | --- | --- | --- | --- | --- | --- | --- |
| 83 | 1.5.1.3 | **Diseño** |  | 1d | 2016-06-10 | 2016-06-11 | 0d |  |
| 84 | 1.5.1.3.1 | Elaborar Documento de Diseño | manual | 1d | 2016-06-10 | 2016-06-10 |  |  |
| 85 | 1.5.1.3.2 | Actualizar Matriz de Trazabilidad de Requerimientos | manual | 1d | 2016-06-10 | 2016-06-10 |  |  |
| 86 | 1.5.1.3.3 | Traspaso de Información | manual | 1d | 2016-06-11 | 2016-06-11 |  |  |
| 87 | 1.5.1.4 | **Construcción** |  | 12.88d | 2016-06-03 | 2016-06-21 | 0d |  |
| 88 | 1.5.1.4.1 | **Modulo Administrativo** |  | 4.88d | 2016-06-03 | 2016-06-09 | 0d |  |
| 89 | 1.5.1.4.1.1 | **Configuración** |  | 4.88d | 2016-06-03 | 2016-06-09 | 0d |  |
| 90 | 1.5.1.4.1.1.1 | Registro de Empresas y Agencias | manual | 1d | 2016-06-03 | 2016-06-03 |  |  |
| 91 | 1.5.1.4.1.1.2 | Registro de dias no Laborables | manual | 1d | 2016-06-04 | 2016-06-04 |  |  |
| 92 | 1.5.1.4.1.1.3 | Registro de Horarios de Trabajo | manual | 1d | 2016-06-06 | 2016-06-06 |  |  |
| 93 | 1.5.1.4.1.1.4 | Registro de Dispositivos | manual | 1d | 2016-06-07 | 2016-06-07 |  |  |
| 94 | 1.5.1.4.1.1.5 | Registro de Empleados | manual | 1d | 2016-06-08 | 2016-06-08 |  |  |
| 95 | 1.5.1.4.1.1.6 | Registro de Horarios de Empleados | manual | 1d | 2016-06-09 | 2016-06-09 |  |  |
| 96 | 1.5.1.4.2 | **Módulo de Operaciones** |  | 3.88d | 2016-06-10 | 2016-06-15 | 1d |  |
| 97 | 1.5.1.4.2.1 | Carga de Empleados |  | 1d | 2016-06-10 | 2016-06-10 | 28d | start no earlier than 2016-06-10 |
| 98 | 1.5.1.4.2.2 | Registro de Huellas | manual | 1d | 2016-06-11 | 2016-06-11 |  |  |
| 99 | 1.5.1.4.2.3 | Descargar Huellas (Backup) | manual | 1d | 2016-06-13 | 2016-06-13 |  |  |
| 100 | 1.5.1.4.2.4 | Registro de Mensajes (SMS) | manual | 1d | 2016-06-14 | 2016-06-14 |  |  |
| 101 | 1.5.1.4.2.5 | Proceso Manual de Marcaciones | manual | 1d | 2016-06-15 | 2016-06-15 |  |  |
| 102 | 1.5.1.4.3 | **Módulo de Reportes** |  | 1.88d | 2016-06-16 | 2016-06-17 | 1d |  |
| 103 | 1.5.1.4.3.1 | Reporte general de Marcaciones |  | 1d | 2016-06-16 | 2016-06-16 | 24d | start no earlier than 2016-06-16 |
| 104 | 1.5.1.4.3.2 | Reporte de Asistencias | manual | 1d | 2016-06-17 | 2016-06-17 |  |  |
| 105 | 1.5.1.4.4 | **Módulo de Seguridad** |  | 0.88d | 2016-06-18 | 2016-06-20 | 0d |  |
| 106 | 1.5.1.4.4.1 | Permisos y Accesos | manual | 1d | 2016-06-18 | 2016-06-18 |  |  |
| 107 | 1.5.1.4.4.2 | Backup | manual | 1d | 2016-06-20 | 2016-06-20 |  |  |
| 108 | 1.5.1.4.5 | Actualizar Matriz de Trazabilidad de Requerimientos | manual | 1d | 2016-06-21 | 2016-06-21 |  |  |
| 109 | 1.5.1.4.6 | Traspaso de Información | manual | 1d | 2016-06-21 | 2016-06-21 |  |  |

| ID | WBS | Task | Type | Duration | Start | Finish | Total slack |
| --- | --- | --- | --- | --- | --- | --- | --- |
| 110 | 1.5.1.5 | **Pruebas** |  | 4.88d | 2016-07-01 | 2016-07-07 | 0d |
| 111 | 1.5.1.5.1 | **Pruebas Funcionales** |  | 2.88d | 2016-07-01 | 2016-07-05 | 0d |
| 112 | 1.5.1.5.1.1 | **Modulo Administrativo** |  | 0.88d | 2016-07-01 | 2016-07-01 | 0d |
| 113 | 1.5.1.5.1.1.1 | Elaborar Pruebas de Modulo | manual | 1d | 2016-07-01 | 2016-07-01 |  |
| 114 | 1.5.1.5.1.1.2 | Elaborar Informe de Prueba | manual | 1d | 2016-07-01 | 2016-07-01 |  |
| 115 | 1.5.1.5.1.1.3 | Traspaso de Información | manual | 1d | 2016-07-01 | 2016-07-01 |  |
| 116 | 1.5.1.5.1.2 | **Modulo de Operaciones** |  | 0d | 2016-07-02 | 2016-07-02 | 0d |
| 117 | 1.5.1.5.1.2.1 | Elaborar Pruebas de Modulo | manual | 1d | 2016-07-02 | 2016-07-02 |  |
| 118 | 1.5.1.5.1.2.2 | Elaborar Informe de Prueba | manual | 1d | 2016-07-02 | 2016-07-02 |  |
| 119 | 1.5.1.5.1.2.3 | Traspaso de Información | manual | 1d | 2016-07-02 | 2016-07-02 |  |
| 120 | 1.5.1.5.1.3 | **Modulo de Reportes** |  | 0.88d | 2016-07-04 | 2016-07-04 | 0d |
| 121 | 1.5.1.5.1.3.1 | Elaborar Pruebas de Modulo | manual | 1d | 2016-07-04 | 2016-07-04 |  |
| 122 | 1.5.1.5.1.3.2 | Elaborar Informe de Prueba | manual | 1d | 2016-07-04 | 2016-07-04 |  |
| 123 | 1.5.1.5.1.3.3 | Traspaso de Información | manual | 1d | 2016-07-04 | 2016-07-04 |  |
| 124 | 1.5.1.5.1.4 | **Modulo de Seguridad** |  | 0.88d | 2016-07-05 | 2016-07-05 | 0d |
| 125 | 1.5.1.5.1.4.1 | Elaborar Pruebas de Modulo | manual | 1d | 2016-07-05 | 2016-07-05 |  |
| 126 | 1.5.1.5.1.4.2 | Elaborar Informe de Prueba | manual | 1d | 2016-07-05 | 2016-07-05 |  |
| 127 | 1.5.1.5.1.4.3 | Traspaso de Información | manual | 1d | 2016-07-05 | 2016-07-05 |  |
| 128 | 1.5.1.5.2 | **Pruebas Externas** |  | 0.88d | 2016-07-07 | 2016-07-07 | 0d |
| 129 | 1.5.1.5.2.1 | Elaborar Matriz de Trazabilidad de Requerimientos Final | manual | 1d | 2016-07-07 | 2016-07-07 |  |
| 130 | 1.5.1.5.2.2 | Traspaso de Información | manual | 1d | 2016-07-07 | 2016-07-07 |  |
| 131 | 1.5.1.6 | **Implementación** |  | 1.88d | 2016-07-08 | 2016-07-11 | 0d |
| 132 | 1.5.1.6.1 | **Guía de Usuario** |  | 1d | 2016-07-08 | 2016-07-09 | 0d |
| 133 | 1.5.1.6.1.1 | Elaborar Guía de publicación de la Web | manual | 1d | 2016-07-08 | 2016-07-08 |  |
| 134 | 1.5.1.6.1.2 | Elaborar Manual de Usuario con todos los módulos actualizados | manual | 1d | 2016-07-08 | 2016-07-08 |  |
| 135 | 1.5.1.6.1.3 | Traspaso de Información | manual | 1d | 2016-07-09 | 2016-07-09 |  |

| ID | WBS | Task | Type | Duration | Start | Finish | Complete | Remaining | Total slack |
| --- | --- | --- | --- | --- | --- | --- | --- | --- | --- |
| 136 | 1.5.1.6.2 | **Preparación del Servidor IIS** |  | 0.88d | 2016-07-11 | 2016-07-11 |  |  | 0d |
| 137 | 1.5.1.6.2.1 | Creación del Servidor IIS | manual | 1d | 2016-07-11 | 2016-07-11 |  |  |  |
| 138 | 1.5.1.6.2.2 | Publicación en la IIS | manual | 1d | 2016-07-11 | 2016-07-11 |  |  |  |
| 139 | 1.6 | **Inducción del Personal** |  | 8d | 2016-05-05 A | 2016-05-16 A | 100% |  |  |
| 140 | 1.6.1 | Establecer Personal para Inducción | manual | 1d | 2016-05-05 A | 2016-05-05 A | 100% |  |  |
| 141 | 1.6.2 | Realizar Inducción al Personal | manual | 5d | 2016-05-06 A | 2016-05-12 A | 100% |  |  |
| 142 | 1.6.3 | Verificar Proceso de Inducción | manual | 1d | 2016-05-13 A | 2016-05-13 A | 100% |  |  |
| 143 | 1.6.4 | Elaborar Certificado de Inducción de Personal | manual | 1d | 2016-05-13 A | 2016-05-13 A | 100% |  |  |
| 144 | 1.6.5 | Traspaso de Información | manual | 1d | 2016-05-13 A | 2016-05-13 A | 100% |  |  |
| 145 | 1.6.6 | Pasar a área de Desarrollo a Personal Capacitado | manual | 1d | 2016-05-16 A | 2016-05-16 A | 100% |  |  |
| 146 | 1.7 | **Proceso de Aseguramiento de la Calidad del Proyecto** |  | 25.88d | 2016-05-31 | 2016-07-05 |  |  | 0d |
| 147 | 1.7.1 | **Primera Revisión** |  | 1.88d | 2016-05-31 | 2016-06-01 |  |  | 0d |
| 148 | 1.7.1.1 | Elaborar Herramienta de Gestion de Aseguramiento de la Calidad | manual | 1d | 2016-05-31 | 2016-05-31 |  |  |  |
| 149 | 1.7.1.2 | Elaborar CheckList de Aseguramiento de la Calidad | manual | 1d | 2016-05-31 | 2016-05-31 |  |  |  |
| 150 | 1.7.1.3 | Traspaso de Información | manual | 1d | 2016-06-01 | 2016-06-01 |  |  |  |
| 151 | 1.7.2 | **Segunda Revisión** |  | 1.88d | 2016-06-20 | 2016-06-21 |  |  | 0d |
| 152 | 1.7.2.1 | Elaborar Herramienta de Gestion de Aseguramiento de la Calidad | manual | 1d | 2016-06-20 | 2016-06-20 |  |  |  |
| 153 | 1.7.2.2 | Actualizar CheckList de Aseguramiento de la Calidad | manual | 1d | 2016-06-20 | 2016-06-20 |  |  |  |
| 154 | 1.7.2.3 | Traspaso de Información | manual | 1d | 2016-06-21 | 2016-06-21 |  |  |  |
| 155 | 1.7.3 | **Tercera Revisión** |  | 1.88d | 2016-07-04 | 2016-07-05 |  |  | 0d |
| 156 | 1.7.3.1 | Elaborar Matriz de Seguimiento del Proyecto | manual | 1d | 2016-07-04 | 2016-07-04 |  |  |  |
| 157 | 1.7.3.2 | Elaborar Informe de Revisión General del QA | manual | 1d | 2016-07-04 | 2016-07-04 |  |  |  |
| 158 | 1.7.3.3 | Traspaso de Información | manual | 1d | 2016-07-05 | 2016-07-05 |  |  |  |
| 159 | 1.8 | **Reuniones Internas DEV-SOFT** |  | 45d | 2016-05-14 A | 2016-07-16 | 17% | 37.5d | 0d |
| 160 | 1.8.1 | **Reunión Quincenal 1** |  | 1d | 2016-05-14 A | 2016-05-14 A | 100% |  |  |
| 161 | 1.8.1.1 | Elaborar Acta de Reunión | manual | 1d | 2016-05-14 A | 2016-05-14 A | 100% |  |  |
| 162 | 1.8.1.2 | Traspaso de Información | manual | 1d | 2016-05-14 A | 2016-05-14 A | 100% |  |  |

| ID | WBS | Task | Type | Duration | Start | Finish | Total slack |
| --- | --- | --- | --- | --- | --- | --- | --- |
| 163 | 1.8.2 | **Reunión Quincenal 2** |  | 1d | 2016-05-28 | 2016-05-28 |  |
| 164 | 1.8.2.1 | Elaborar Acta de Reunión | manual | 1d | 2016-05-28 | 2016-05-28 |  |
| 165 | 1.8.2.2 | Traspaso de Información | manual | 1d | 2016-05-28 | 2016-05-28 |  |
| 166 | 1.8.3 | **Reunión Quincenal 3** |  | 1d | 2016-06-11 | 2016-06-11 |  |
| 167 | 1.8.3.1 | Elaborar Acta de Reunión | manual | 1d | 2016-06-11 | 2016-06-11 |  |
| 168 | 1.8.3.2 | Traspaso de Información | manual | 1d | 2016-06-11 | 2016-06-11 |  |
| 169 | 1.8.4 | **Reunión Quincenal 4** |  | 1d | 2016-06-25 | 2016-06-25 |  |
| 170 | 1.8.4.1 | Elaborar Acta de Reunión | manual | 1d | 2016-06-25 | 2016-06-25 |  |
| 171 | 1.8.4.2 | Traspaso de Información | manual | 1d | 2016-06-25 | 2016-06-25 |  |
| 172 | 1.8.5 | **Reunión Quincenal 5** |  | 1d | 2016-07-09 | 2016-07-09 |  |
| 173 | 1.8.5.1 | Elaborar Acta de Reunión | manual | 1d | 2016-07-09 | 2016-07-09 |  |
| 174 | 1.8.5.2 | Traspaso de Información | manual | 1d | 2016-07-09 | 2016-07-09 |  |
| 175 | 1.8.6 | **Reunión Final** |  | 1d | 2016-07-16 | 2016-07-16 |  |
| 176 | 1.8.6.1 | Elaborar Acta de Reunión | manual | 1d | 2016-07-16 | 2016-07-16 |  |
| 177 | 1.8.6.2 | Traspaso de Información | manual | 1d | 2016-07-16 | 2016-07-16 |  |
| 178 | 1.9 | **Reuniones Externas DEV SOFT - CLIENTE** |  | 40.88d | 2016-05-23 | 2016-07-18 | 0d |
| 179 | 1.9.1 | **Primera Presentación del Proyecto** |  | 1d | 2016-05-23 | 2016-05-23 | 0d |
| 180 | 1.9.1.1 | Reunión Externa con PDS EIRL | manual | 1d | 2016-05-23 | 2016-05-23 |  |
| 181 | 1.9.1.2 | Acta de Reunión con Acuerdos Tomados | manual | 1d | 2016-05-23 | 2016-05-23 |  |
| 182 | 1.9.1.3 | Traspaso de Información | manual | 1d | 2016-05-23 | 2016-05-23 |  |
| 183 | 1.9.2 | **Segunda Presentación del Proyecto** |  | 1d | 2016-06-20 | 2016-06-20 | 0d |
| 184 | 1.9.2.1 | Reunión Externa con PDS EIRL | manual | 1d | 2016-06-20 | 2016-06-20 |  |
| 185 | 1.9.2.2 | Acta de Reunión con Acuerdos Tomados | manual | 1d | 2016-06-20 | 2016-06-20 |  |
| 186 | 1.9.2.3 | Traspaso de Información | manual | 1d | 2016-06-20 | 2016-06-20 |  |

| ID | WBS | Task | Type | Duration | Start | Finish | Total slack |
| --- | --- | --- | --- | --- | --- | --- | --- |
| 187 | 1.9.3 | **Tercera Presentación del Proyecto** |  | 0.88d | 2016-07-18 | 2016-07-18 | 0d |
| 188 | 1.9.3.1 | Kick Off Meeting con Profesor | manual | 1d | 2016-07-18 | 2016-07-18 |  |
| 189 | 1.9.3.2 | Acta de Reunión con acuerdos tomados | manual | 1d | 2016-07-18 | 2016-07-18 |  |
| 190 | 1.9.3.3 | Traspaso de Información | manual | 1d | 2016-07-18 | 2016-07-18 |  |
